# AFS Tambaram – Plumbing, Sanitary & Building Repairs (2026–27).

Schedule from Primavera P6, 2026-08-27 to 2026-12-24, data date 2026-08-27.

## Calendars

- CR Cal: Mon-Fri 09:00-13:00, 14:00-18:00; Sat-Sun off. Exceptions (off unless hours are given): 2026-10-02.

## Schedule

| ID | WBS | Activity | Type | Duration | Start | Finish | Predecessors | Total float | Free float | Constraint |
| --- | --- | --- | --- | --- | --- | --- | --- | --- | --- | --- |
|  | 1 | **Project controls and mobilization** |  |  | 2026-08-27 | 2026-09-02 |  |  |  |  |
| A110 |  | Mobilize staff, tools, materials and temporary facilities |  | 5d | 2026-08-27 | 2026-09-02 | M100 | 80d |  |  |
| A120 |  | Review specifications, confirm work locations and prepare execution plan |  | 3d | 2026-08-27 | 2026-08-31 | M100 | 0d |  |  |
| M100 |  | Notice to Proceed / Start milestone | milestone | 0d | 2026-08-27 | 2026-08-27 |  | 0d |  | start on or after 2026-08-27 |
|  | 2 | **Surveys, access and work-area preparation** |  |  | 2026-09-01 | 2026-09-21 |  |  |  |  |
| A130 |  | Joint condition survey and identify repair locations |  | 5d | 2026-09-01 | 2026-09-07 | A120 | 0d |  |  |
| A140 |  | Agree access, work sequencing and service shutdowns with occupants / Engineer |  | 3d | 2026-09-08 | 2026-09-10 | A130 | 4d | 0d |  |
| A160 |  | Procure and deliver approved materials |  | 10d | 2026-09-08 | 2026-09-21 | A130 | 0d |  |  |
| A150 |  | Protect occupied areas and establish work zones |  | 3d | 2026-09-11 | 2026-09-15 | A140 | 4d |  |  |
| A170 |  | Work areas released and materials available milestone | milestone | 0d | 2026-09-21 | 2026-09-21 | A150, A160 | 0d |  |  |
|  | 3 | **Plumbing, water supply and sanitary repairs** |  |  | 2026-09-22 | 2026-11-16 |  |  |  |  |
| A210 |  | Isolate services and take down defective / redundant pipework and fittings |  | 5d | 2026-09-22 | 2026-09-28 | A170 | 0d |  |  |
| A220 |  | Open chases and make local openings for concealed pipework |  | 5d | 2026-09-29 | 2026-10-06 | A210 | 0d |  |  |
| A240 |  | Repair / replace tanks, tank connections and clean tanks / lines |  | 7d | 2026-09-29 | 2026-10-08 | A210 | 18d |  |  |
| A250 |  | Replace / repair soil, waste, vent and rainwater pipework and fittings |  | 10d | 2026-09-29 | 2026-10-13 | A210 | 5d |  |  |
| A230 |  | Replace / refix internal water-supply pipework, valves and connections |  | 10d | 2026-10-07 | 2026-10-20 | A220 | 0d |  |  |
| A260 |  | Repair / replace sanitary fixtures and accessories by area |  | 10d | 2026-10-21 | 2026-11-03 | A230, A250 | 0d |  |  |
| A270 |  | Pressure, flow and drainage tests; rectify plumbing defects |  | 4d | 2026-11-04 | 2026-11-09 | A230, A240, A250, A260 | 0d |  |  |
| A280 |  | Close chases and make good disturbed masonry / plaster |  | 5d | 2026-11-10 | 2026-11-16 | A270 | 7d | 0d |  |
|  | 4 | **Sunken floors, seepage treatment and internal finishes** |  |  | 2026-09-22 | 2026-12-14 |  |  |  |  |
| A310 |  | Remove defective floor / wall finishes and loose material in wet areas |  | 7d | 2026-09-22 | 2026-09-30 | A170 | 17d | 0d |  |
| A320 |  | Remove damaged sunken-slab treatment and prepare substrate |  | 5d | 2026-10-01 | 2026-10-08 | A310 | 17d | 0d |  |
| A330 |  | Repair cracks, joints, outlets and local concrete / plaster defects |  | 5d | 2026-10-09 | 2026-10-15 | A320 | 17d |  |  |
| A340 |  | Apply specified sunken-slab waterproofing system |  | 5d | 2026-11-10 | 2026-11-16 | A330, A270 | 0d |  |  |
| A350 |  | Water ponding / seepage test and rectify if required |  | 3d | 2026-11-17 | 2026-11-19 | A340 | 0d |  |  |
| A380 |  | Re-plaster and prepare repaired wall / ceiling surfaces |  | 7d | 2026-11-17 | 2026-11-25 | A280 | 7d | 0d |  |
| A360 |  | Complete filling, screed / bedding and substrate preparation |  | 7d | 2026-11-20 | 2026-11-30 | A350 | 0d |  |  |
| A390 |  | Apply paint, distemper or whitewash to prepared surfaces |  | 6d | 2026-11-26 | 2026-12-03 | A380 | 7d |  |  |
| A370 |  | Lay floor tiles and wall dado / skirting finishes |  | 10d | 2026-12-01 | 2026-12-14 | A360, A280 | 0d |  |  |

| ID | WBS | Activity | Type | Duration | Start | Finish | Predecessors | Total float | Free float |
| --- | --- | --- | --- | --- | --- | --- | --- | --- | --- |
|  | 5 | **Roof and rainwater repairs** |  |  | 2026-09-22 | 2026-10-16 |  |  |  |
| A410 |  | Remove defective roof treatment and clean roof surfaces |  | 4d | 2026-09-22 | 2026-09-25 | A170 | 41d | 0d |
| A420 |  | Repair roof substrate, fillets, screed and local concrete |  | 5d | 2026-09-28 | 2026-10-05 | A410 | 41d | 0d |
| A430 |  | Apply roof waterproofing / membrane and treat joints |  | 6d | 2026-10-06 | 2026-10-13 | A420 | 41d | 0d |
| A440 |  | Roof water test and rectify leaks |  | 3d | 2026-10-14 | 2026-10-16 | A430 | 41d |  |
|  | 6 | **Associated building and metalwork** |  |  | 2026-09-22 | 2026-10-07 |  |  |  |
| A510 |  | Complete minor associated masonry, door / frame, granite and metalwork repairs |  | 8d | 2026-09-22 | 2026-10-01 | A170 | 48d | 0d |
| A520 |  | Prepare and paint repaired metalwork |  | 3d | 2026-10-05 | 2026-10-07 | A510 | 48d |  |
|  | 7 | **Testing, reinstatement and handover** |  |  | 2026-12-15 | 2026-12-24 |  |  |  |
| A610 |  | Final clean, remove debris and reinstate work areas |  | 3d | 2026-12-15 | 2026-12-17 | A270, A370, A390, A440, A520 | 0d |  |
| A620 |  | Joint inspection and close punch-list items |  | 3d | 2026-12-18 | 2026-12-22 | A610 | 0d |  |
| A630 |  | Submit test records, completion documents and hand over |  | 2d | 2026-12-23 | 2026-12-24 | A620 | 0d |  |
| M199 |  | Practical Completion / Handover milestone | milestone | 0d | 2026-12-24 | 2026-12-24 | A630 | 0d |  |
